# SagemakerMLOps

Schedule from ProjectLibre, 2023-10-24 to 2024-03-01.

## Calendars

- Estandar: Mon-Fri 08:00-12:00, 13:00-17:00; Sat-Sun off.

## Resources

| Resource |
| --- |
| No Asignado |

## Schedule

| ID | WBS | Task | Duration | Start | Finish | Predecessors | Baseline start | Baseline finish | Constraint |
| --- | --- | --- | --- | --- | --- | --- | --- | --- | --- |
| 1 | 1 | **Fase 2 (Repeatable & Reliable)** | 94d? | 2023-10-24 | 2024-03-01 |  | 2023-12-06 | 2023-12-06 |  |
| 2 | 1.1 | **Construcción de plataforma DEV** | 59d? | 2023-10-24 | 2024-01-12 |  | 2023-12-06 | 2023-12-06 |  |
| 3 | 1.1.1 | **Provisionamiento de cuentas y permisos** | 37d? | 2023-10-24 | 2023-12-13 |  |  |  |  |
| 4 | 1.1.1.1 | **Solicitud** | 27d? | 2023-10-24 | 2023-11-29 |  |  |  |  |
| 5 | 1.1.1.1.1 | De cuenta AWS DEV | 2d? | 2023-10-24 | 2023-10-25 |  |  |  | start no later than 2023-10-24 |
| 6 | 1.1.1.1.2 | De repositorio de github IaC | 2d? | 2023-10-24 | 2023-10-25 |  |  |  | start no later than 2023-10-24 |
| 7 | 1.1.1.1.3 | De cuenta terraform DEV | 2d? | 2023-10-24 | 2023-10-25 |  |  |  | start no later than 2023-10-24 |
| 8 | 1.1.1.1.4 | De repositorio de github ML | 2d? | 2023-11-28 | 2023-11-29 |  |  |  | start no later than 2023-11-28 |
| 9 | 1.1.1.2 | **Entrega/Recepción** | 18.75d? | 2023-11-14 | 2023-12-08 |  |  |  |  |
| 10 | 1.1.1.2.1 | De cuenta AWS para ambiente DEV | 5.75d? | 2023-11-14 | 2023-11-21 |  |  |  | start no later than 2023-11-14 |
| 11 | 1.1.1.2.2 | De repositorio de github para IaC | 5d | 2023-11-14 | 2023-11-21 |  |  |  | start no later than 2023-11-14 |
| 12 | 1.1.1.2.3 | De cuenta de Terraform asociada a AWS ambiente DEV | 4.88d? | 2023-11-14 | 2023-11-21 |  |  |  | start no later than 2023-11-14 |
| 13 | 1.1.1.2.4 | De repositorio de github ML (para código de modelo nómina adquisión) | 1d | 2023-11-28 | 2023-11-28 |  |  |  | start no later than 2023-11-28 |
| 14 | 1.1.1.2.5 | De cuenta prueba Veracode | 10d? | 2023-11-27 | 2023-12-08 |  |  |  | start no later than 2023-11-27 |
| 15 | 1.1.1.2.6 | De ambiente pruebas Sonarcube | 10d? | 2023-11-27 | 2023-12-08 |  |  |  | start no later than 2023-11-27 |
| 16 | 1.1.1.3 | **Validación** | 20d? | 2023-11-16 | 2023-12-13 | 9 |  |  |  |
| 17 | 1.1.1.3.1 | De permisos push y pull requests en repositorio IaC | 4d | 2023-11-16 | 2023-11-21 | 9 |  |  | start no later than 2023-11-16 |
| 18 | 1.1.1.3.2 | De despliegue IaC mediante Terraform asociado a pull request repositorio IaC | 4d | 2023-11-16 | 2023-11-21 | 9 |  |  | start no later than 2023-11-16 |
| 19 | 1.1.1.3.3 | De permisos push y pull requests en repositorio ML | 1d? | 2023-11-28 | 2023-11-29 | 9 |  |  | start no later than 2023-11-28 |
| 20 | 1.1.1.3.4 | De escaneo de código mediante Veracode | 11.75d? | 2023-11-28 | 2023-12-13 | 9 |  |  | start no later than 2023-11-28 |
| 21 | 1.1.1.3.5 | De escaneo de código mediante Sonarcube | 11.75d? | 2023-11-28 | 2023-12-13 | 9 |  |  | start no later than 2023-11-28 |
| 22 | 1.1.2 | **Despliegue de infraestructura DEV** | 1d? | 2023-11-21 | 2023-11-21 | 3 |  |  |  |
| 23 | 1.1.2.1 | **Almacenamiento** | 1d? | 2023-11-21 | 2023-11-21 | 3 |  |  |  |
| 24 | 1.1.2.1.1 | Buckets de S3 | 1d? | 2023-11-21 | 2023-11-21 | 3 |  |  | start no later than 2023-11-21 |

| ID | WBS | Task | Duration | Start | Finish | Predecessors | Constraint |
| --- | --- | --- | --- | --- | --- | --- | --- |
| 25 | 1.1.2.2 | **Cómputo** | 1d? | 2023-11-21 | 2023-11-21 | 3 |  |
| 26 | 1.1.2.2.1 | Sagemaker Domain DEV | 1d? | 2023-11-21 | 2023-11-21 | 3 | start no later than 2023-11-21 |
| 27 | 1.1.2.2.2 | Cluster EMR (spark) | 1d? | 2023-11-21 | 2023-11-21 | 3 | start no later than 2023-11-21 |
| 28 | 1.1.2.3 | **Gobierno** | 1d? | 2023-11-21 | 2023-11-21 | 3 |  |
| 29 | 1.1.2.3.1 | Glue Data Catalog | 1d? | 2023-11-21 | 2023-11-21 | 3 | start no later than 2023-11-21 |
| 30 | 1.1.2.4 | **Networking** | 1d? | 2023-11-21 | 2023-11-21 | 3 |  |
| 31 | 1.1.2.4.1 | VPC Sagemaker DEV | 1d? | 2023-11-21 | 2023-11-21 | 3 | start no later than 2023-11-21 |
| 32 | 1.1.3 | **Configuración de infraestructura** | 39d? | 2023-11-21 | 2024-01-12 | 22 | start no later than 2023-11-21 |
| 33 | 1.1.3.1 | **Almacenamiento** | 1d? | 2023-11-21 | 2023-11-21 |  |  |
| 34 | 1.1.3.1.1 | Buckets de S3 | 1d? | 2023-11-21 | 2023-11-21 |  | start no later than 2023-11-21 |
| 35 | 1.1.3.2 | **Cómputo** | 39d? | 2023-11-21 | 2024-01-12 |  |  |
| 36 | 1.1.3.2.1 | **Capacidad Sagemaker Domain DEV** | 39d? | 2023-11-21 | 2024-01-12 |  |  |
| 37 | 1.1.3.2.1.1 | Projects | 39d? | 2023-11-21 | 2024-01-12 |  | start no later than 2023-11-21 |
| 38 | 1.1.3.2.1.2 | Feature Store | 39d | 2023-11-21 | 2024-01-12 |  | start no later than 2023-11-21 |
| 39 | 1.1.3.2.1.3 | Model Registry | 39d | 2023-11-21 | 2024-01-12 |  | start no later than 2023-11-21 |
| 40 | 1.1.3.2.1.4 | Experiments | 39d | 2023-11-21 | 2024-01-12 |  | start no later than 2023-11-21 |
| 41 | 1.1.3.2.1.5 | Pipelines | 39d? | 2023-11-21 | 2024-01-12 |  | start no later than 2023-11-21 |
| 42 | 1.1.3.2.1.6 | Code version control sobre repositorio github ML | 39d | 2023-11-21 | 2024-01-12 |  | start no later than 2023-11-21 |
| 43 | 1.1.3.2.1.7 | **Opt-in spark cluster** | 39d | 2023-11-21 | 2024-01-12 |  |  |
| 44 | 1.1.3.2.1.7.1 | Uso | 39d | 2023-11-21 | 2024-01-12 |  | start no later than 2023-11-21 |
| 45 | 1.1.3.2.1.7.2 | Encendido | 39d | 2023-11-21 | 2024-01-12 |  | start no later than 2023-11-21 |
| 46 | 1.1.3.2.1.7.3 | Creación | 39d | 2023-11-21 | 2024-01-12 |  | start no later than 2023-11-21 |
| 47 | 1.1.3.2.1.7.4 | Borrado | 39d | 2023-11-21 | 2024-01-12 |  | start no later than 2023-11-21 |
| 48 | 1.1.3.2.1.8 | **Adicional** | 39d | 2023-11-21 | 2024-01-12 |  |  |
| 49 | 1.1.3.2.1.8.1 | Restricción de imágenes EC2 | 39d | 2023-11-21 | 2024-01-12 |  | start no later than 2023-11-21 |
| 50 | 1.1.3.2.1.8.2 | Autostop EC2 | 39d | 2023-11-21 | 2024-01-12 |  | start no later than 2023-11-21 |

| ID | WBS | Task | Duration | Start | Finish | Predecessors | Constraint |
| --- | --- | --- | --- | --- | --- | --- | --- |
| 51 | 1.1.3.3 | **Gobierno** | 39d | 2023-11-21 | 2024-01-12 |  |  |
| 52 | 1.1.3.3.1 | **Role Based Access Control** | 39d | 2023-11-21 | 2024-01-12 |  |  |
| 53 | 1.1.3.3.1.1 | Creación de roles | 39d | 2023-11-21 | 2024-01-12 |  | start no later than 2023-11-21 |
| 54 | 1.1.3.3.1.2 | Creación de policies | 39d | 2023-11-21 | 2024-01-12 |  | start no later than 2023-11-21 |
| 55 | 1.1.3.3.1.3 | Asociar policies a roles | 39d | 2023-11-21 | 2024-01-12 |  | start no later than 2023-11-21 |
| 56 | 1.1.3.3.1.4 | Pruebas de funcionalidad Sagemaker permitida bajo asignación actual | 39d | 2023-11-21 | 2024-01-12 |  | start no later than 2023-11-21 |
| 57 | 1.1.3.4 | **Networking** | 30d? | 2023-12-04 | 2024-01-12 |  |  |
| 58 | 1.1.3.4.1 | Conexión a repositorio github ML desde Sagemaker DEV | 15d? | 2023-12-04 | 2023-12-22 |  | start no later than 2023-12-04 |
| 59 | 1.1.3.4.2 | Conexión a Snowflake DEV desde Sagemaker DEV | 19d? | 2023-12-19 | 2024-01-12 |  | start no earlier than 2023-12-19 |
| 60 | 1.2 | **Migración de modelo Nómina Adquisición DEV** | 83.75d? | 2023-10-31 | 2024-02-23 |  |  |
| 61 | 1.2.1 | **Extracción y carga de información maestras** | 68.75d? | 2023-10-31 | 2024-02-02 |  |  |
| 62 | 1.2.1.1 | **A S3** | 44.88d? | 2023-10-31 | 2024-01-02 |  |  |
| 63 | 1.2.1.1.1 | Comité de Excepciones | 8.75d? | 2023-10-31 | 2023-11-10 |  | start no later than 2023-10-31 |
| 64 | 1.2.1.1.2 | Preparación del dataset (asume la aplicación de la regla propuesta por Data Engineering) | 34.88d? | 2023-11-14 | 2024-01-02 | 63 | start no later than 2023-11-14 |
| 65 | 1.2.1.1.3 | Carga de dataset a repositorios de S3 | 11.75d? | 2023-11-30 | 2023-12-15 | 63 | start no later than 2023-11-30 |
| 66 | 1.2.1.1.4 | Consumo Sagemaker | 9.75d? | 2023-12-04 | 2023-12-15 | 63 | start no later than 2023-12-04 |
| 67 | 1.2.1.1.5 | Definición de cifras control | 8.75d? | 2023-12-05 | 2023-12-15 | 63 | start no later than 2023-12-05 |
| 68 | 1.2.1.1.6 | Validación de consumo con base en cifras control | 8.75d? | 2023-12-05 | 2023-12-15 | 63 | start no later than 2023-12-05 |
| 69 | 1.2.1.2 | **A Snowflake** | 39d? | 2023-12-12 | 2024-02-02 |  |  |
| 70 | 1.2.1.2.1 | Comité de Excepciones | 9d? | 2024-01-09 | 2024-01-19 |  | start no earlier than 2024-01-09 |
| 71 | 1.2.1.2.2 | Petición/recepción de usuario de proceso para conexión Snowflake | 4d? | 2023-12-12 | 2023-12-15 |  | start no earlier than 2023-12-12 |
| 72 | 1.2.1.2.3 | Validación de conexión mediante private link | 24d? | 2023-12-12 | 2024-01-12 |  | start no earlier than 2023-12-12 |
| 73 | 1.2.1.2.4 | Creación de tablas en Snowflake | 5d? | 2024-01-22 | 2024-01-26 | 70 | start no earlier than 2024-01-15 |
| 74 | 1.2.1.2.5 | Carga de datasets a tablas Snowflake | 10d? | 2024-01-22 | 2024-02-02 | 70 |  |
| 75 | 1.2.1.2.6 | Consumo desde Sagemaker | 10d? | 2024-01-22 | 2024-02-02 | 70 |  |
| 76 | 1.2.1.2.7 | Validación de consumo con base en cifras control | 10d? | 2024-01-22 | 2024-02-02 | 70 |  |

| ID | WBS | Task | Duration | Start | Finish | Predecessors | Constraint |
| --- | --- | --- | --- | --- | --- | --- | --- |
| 77 | 1.2.2 | **Transformación variables bajo maestras** | 60d? | 2023-12-04 | 2024-02-23 |  |  |
| 78 | 1.2.2.1 | Recepción y análisis código SAS | 10d? | 2023-12-04 | 2023-12-15 |  | start no later than 2023-12-04 |
| 79 | 1.2.2.2 | **Sobre S3** | 40d? | 2023-12-11 | 2024-02-02 |  |  |
| 80 | 1.2.2.2.1 | **Sesiones de trabajo conjunto (Data Eng + Data Science)** | 30d? | 2023-12-11 | 2024-01-19 |  |  |
| 81 | 1.2.2.2.1.1 | Reconstrucción variables 1-5 | 5d? | 2023-12-11 | 2023-12-15 |  | start no earlier than 2023-12-11 |
| 82 | 1.2.2.2.1.2 | Reconstrucción variables 6-10 | 5d? | 2023-12-18 | 2023-12-22 |  | start no earlier than 2023-12-18 |
| 83 | 1.2.2.2.1.3 | Reconstrucción variables 11-15 | 5d? | 2024-01-01 | 2024-01-05 |  | start no earlier than 2024-01-01 |
| 84 | 1.2.2.2.1.4 | Reconstrucción variables 16-20 | 5d? | 2024-01-08 | 2024-01-12 |  | start no earlier than 2024-01-08 |
| 85 | 1.2.2.2.1.5 | Reconstrucción variables 20-26 | 5d? | 2024-01-15 | 2024-01-19 |  | start no earlier than 2024-01-15 |
| 86 | 1.2.2.2.2 | **Uso de vars reconstruidas bajo maestras en modelo de nómina** | 23d? | 2024-01-03 | 2024-02-02 |  |  |
| 87 | 1.2.2.2.2.1 | Incorporación a pipeline Sagemaker | 15d? | 2024-01-03 | 2024-01-23 |  | start no earlier than 2024-01-03 |
| 88 | 1.2.2.2.2.2 | Obtención de métricas resultado de variables reconstruidas en el modelo | 3d? | 2024-01-24 | 2024-01-26 | 80 | start no earlier than 2024-01-24 |
| 89 | 1.2.2.2.2.3 | Ajuste para modificación de métricas | 5d? | 2024-01-29 | 2024-02-02 |  | start no earlier than 2024-01-29 |
| 90 | 1.2.2.3 | **Sobre Snowflake DEV** | 15d? | 2024-02-05 | 2024-02-23 |  |  |
| 91 | 1.2.2.3.1 | **Reconstrucción de variables** | 5d? | 2024-02-05 | 2024-02-09 |  |  |
| 92 | 1.2.2.3.1.1 | Reconstrucción variables 1-5 | 5d? | 2024-02-05 | 2024-02-09 |  | start no earlier than 2024-02-05 |
| 93 | 1.2.2.3.1.2 | Reconstrucción variables 6-10 | 5d | 2024-02-05 | 2024-02-09 |  | start no earlier than 2024-02-05 |
| 94 | 1.2.2.3.1.3 | Reconstrucción variables 11-15 | 5d | 2024-02-05 | 2024-02-09 |  | start no earlier than 2024-02-05 |
| 95 | 1.2.2.3.1.4 | Reconstrucción variables 16-20 | 5d | 2024-02-05 | 2024-02-09 |  | start no earlier than 2024-02-05 |
| 96 | 1.2.2.3.1.5 | Reconstrucción variables 20-26 | 5d | 2024-02-05 | 2024-02-09 |  | start no earlier than 2024-02-05 |
| 97 | 1.2.2.3.2 | **Uso de vars reconstruidas bajo maestras en modelo de nómina** | 10d? | 2024-02-12 | 2024-02-23 |  |  |
| 98 | 1.2.2.3.2.1 | Incorporación a pipeline Sagemaker | 5d? | 2024-02-12 | 2024-02-16 |  | start no earlier than 2024-02-12 |
| 99 | 1.2.2.3.2.2 | Validación con métricas obtenidas en etapa con S3 | 5d? | 2024-02-19 | 2024-02-23 | 91 | start no earlier than 2024-02-19 |
| 100 | 1.3 | **Implementación de CI/CD (MLOps)** | 30d? | 2023-12-11 | 2024-01-19 |  |  |
| 101 | 1.3.1 | Configuración de credenciales AWS DEV para conexión con repo github ML | 5d? | 2023-12-11 | 2023-12-15 |  | start no earlier than 2023-12-11 |
| 102 | 1.3.2 | Configuración de credenciales repo github ML para conexión AWS DEV | 5d? | 2023-12-11 | 2023-12-15 |  | start no earlier than 2023-12-11 |
| 103 | 1.3.3 | Verificación de conexión AWS DEV - Github | 8d? | 2023-12-11 | 2023-12-20 |  | start no earlier than 2023-12-11 |
| 104 | 1.3.4 | Pipeline Deployment: Implementación de scripts CI/CD (github actions) | 20d? | 2023-12-18 | 2024-01-12 |  | start no earlier than 2023-12-18 |
| 105 | 1.3.5 | Pipeline Deployment: Automatizar despliegue del modelo | 20d? | 2023-12-18 | 2024-01-12 |  | start no earlier than 2023-12-18 |
| 106 | 1.3.6 | Pipeline Monitoring: Implementación pipeline de pruebas y validación (veracode, sonarcube, herramientas ad hoc) | 20d? | 2023-12-18 | 2024-01-12 |  | start no earlier than 2023-12-18 |
| 107 | 1.3.7 | Pipeline Monitoring: Implementación pipelines de seguimiento a métricas del modelo | 10d? | 2024-01-08 | 2024-01-19 |  | start no earlier than 2024-01-08 |

| ID | WBS | Task | Duration | Start | Finish | Constraint |
| --- | --- | --- | --- | --- | --- | --- |
| 108 | 1.4 | **Documentación** | 1d? | 2023-12-06 | 2023-12-06 |  |
| 109 | 1.4.1 | Aprobación DT | 1d? | 2023-12-06 | 2023-12-06 |  |
| 110 | 1.5 | **Construcción de plataforma PRE** | 79d? | 2023-10-24 | 2024-02-09 |  |
| 111 | 1.5.1 | **Provisionamiento de cuentas y permisos** | 39d? | 2023-10-24 | 2023-12-15 |  |
| 112 | 1.5.1.1 | **Solicitud** | 2d? | 2023-10-24 | 2023-10-25 |  |
| 113 | 1.5.1.1.1 | De cuenta AWS PRE | 2d? | 2023-10-24 | 2023-10-25 | start no later than 2023-10-24 |
| 114 | 1.5.1.1.2 | De repositorio de github IaC | 2d | 2023-10-24 | 2023-10-25 | start no later than 2023-10-24 |
| 115 | 1.5.1.1.3 | De cuenta terraform | 2d | 2023-10-24 | 2023-10-25 | start no later than 2023-10-24 |
| 116 | 1.5.1.2 | **Entrega/Recepción** | 6d? | 2023-11-14 | 2023-11-21 |  |
| 117 | 1.5.1.2.1 | De cuenta AWS para ambiente PRE | 6d | 2023-11-14 | 2023-11-21 | start no later than 2023-11-14 |
| 118 | 1.5.1.2.2 | De repositorio de github para IaC | 6d? | 2023-11-14 | 2023-11-21 | start no later than 2023-11-14 |
| 119 | 1.5.1.2.3 | De cuenta de Terraform asociada a AWS ambiente PRE | 6d? | 2023-11-14 | 2023-11-21 | start no later than 2023-11-14 |
| 120 | 1.5.1.3 | **Validación** | 8d? | 2023-12-06 | 2023-12-15 |  |
| 121 | 1.5.1.3.1 | De permisos push y pull requests en repositorio IaC | 8d? | 2023-12-06 | 2023-12-15 |  |
| 122 | 1.5.1.3.2 | De despliegue IaC mediante Terraform asociado a pull request repositorio IaC | 8d? | 2023-12-06 | 2023-12-15 |  |
| 123 | 1.5.2 | **Despliegue de infraestructura PRE** | 3d? | 2024-01-03 | 2024-01-05 |  |
| 124 | 1.5.2.1 | **Almacenamiento** | 3d? | 2024-01-03 | 2024-01-05 |  |
| 125 | 1.5.2.1.1 | Buckets de S3 | 3d? | 2024-01-03 | 2024-01-05 | start no earlier than 2024-01-03 |
| 126 | 1.5.2.2 | **Cómputo** | 3d? | 2024-01-03 | 2024-01-05 |  |
| 127 | 1.5.2.2.1 | Sagemaker Domain PRE | 3d? | 2024-01-03 | 2024-01-05 | start no earlier than 2024-01-03 |
| 128 | 1.5.2.2.2 | Cluster EMR (spark) | 3d? | 2024-01-03 | 2024-01-05 | start no earlier than 2024-01-03 |
| 129 | 1.5.2.3 | **Gobierno** | 3d? | 2024-01-03 | 2024-01-05 |  |
| 130 | 1.5.2.3.1 | Glue Data Catalog | 3d? | 2024-01-03 | 2024-01-05 | start no earlier than 2024-01-03 |
| 131 | 1.5.2.4 | **Networking** | 3d? | 2024-01-03 | 2024-01-05 |  |
| 132 | 1.5.2.4.1 | VPC Sagemaker PRE | 3d? | 2024-01-03 | 2024-01-05 | start no earlier than 2024-01-03 |

| ID | WBS | Task | Duration | Start | Finish | Predecessors | Constraint |
| --- | --- | --- | --- | --- | --- | --- | --- |
| 133 | 1.5.3 | **Validación configuración de infraestructura en PRE** | 20d? | 2024-01-08 | 2024-02-02 | 123 |  |
| 134 | 1.5.3.1 | **Almacenamiento** | 20d? | 2024-01-08 | 2024-02-02 |  |  |
| 135 | 1.5.3.1.1 | Buckets de S3 | 20d? | 2024-01-08 | 2024-02-02 |  | start no earlier than 2024-01-08 |
| 136 | 1.5.3.2 | **Cómputo** | 20d? | 2024-01-08 | 2024-02-02 |  |  |
| 137 | 1.5.3.2.1 | Capacidad Sagemaker Domain PRE | 20d? | 2024-01-08 | 2024-02-02 |  |  |
| 138 | 1.5.3.2.2 | Projects | 20d? | 2024-01-08 | 2024-02-02 |  |  |
| 139 | 1.5.3.2.3 | Feature Store | 20d? | 2024-01-08 | 2024-02-02 |  |  |
| 140 | 1.5.3.2.4 | Model Registry | 20d? | 2024-01-08 | 2024-02-02 |  |  |
| 141 | 1.5.3.2.5 | Experiments | 20d? | 2024-01-08 | 2024-02-02 |  |  |
| 142 | 1.5.3.2.6 | Pipelines | 20d? | 2024-01-08 | 2024-02-02 |  |  |
| 143 | 1.5.3.2.7 | Code version control sobre repositorio github ML | 20d? | 2024-01-08 | 2024-02-02 |  |  |
| 144 | 1.5.3.3 | **Opt-in spark cluster** | 20d? | 2024-01-08 | 2024-02-02 |  |  |
| 145 | 1.5.3.3.1 | Uso | 20d? | 2024-01-08 | 2024-02-02 |  |  |
| 146 | 1.5.3.3.2 | Encendido | 20d? | 2024-01-08 | 2024-02-02 |  |  |
| 147 | 1.5.3.3.3 | Creación | 20d? | 2024-01-08 | 2024-02-02 |  |  |
| 148 | 1.5.3.3.4 | Borrado | 20d? | 2024-01-08 | 2024-02-02 |  |  |
| 149 | 1.5.3.4 | **Adicional** | 20d? | 2024-01-08 | 2024-02-02 |  |  |
| 150 | 1.5.3.4.1 | Restricción de imágenes EC2 | 20d? | 2024-01-08 | 2024-02-02 |  |  |
| 151 | 1.5.3.4.2 | Autostop EC2 | 20d? | 2024-01-08 | 2024-02-02 |  |  |
| 152 | 1.5.3.5 | **Gobierno** | 20d? | 2024-01-08 | 2024-02-02 |  |  |
| 153 | 1.5.3.5.1 | **Role Based Access Control** | 20d? | 2024-01-08 | 2024-02-02 |  |  |
| 154 | 1.5.3.5.1.1 | Creación de roles | 20d? | 2024-01-08 | 2024-02-02 |  |  |
| 155 | 1.5.3.5.1.2 | Creación de policies | 20d? | 2024-01-08 | 2024-02-02 |  |  |
| 156 | 1.5.3.5.1.3 | Asociar policies a roles | 20d? | 2024-01-08 | 2024-02-02 |  |  |
| 157 | 1.5.3.5.1.4 | Pruebas de funcionalidad Sagemaker permitida bajo asignación actual | 20d? | 2024-01-08 | 2024-02-02 |  |  |

| ID | WBS | Task | Duration | Start | Finish | Predecessors | Constraint |
| --- | --- | --- | --- | --- | --- | --- | --- |
| 158 | 1.5.3.6 | **Networking** | 20d? | 2024-01-08 | 2024-02-02 |  |  |
| 159 | 1.5.3.6.1 | Conexión a repositorio github ML desde Sagemaker PRE | 20d? | 2024-01-08 | 2024-02-02 |  |  |
| 160 | 1.5.3.6.2 | Conexión a Snowflake PRE desde Sagemaker PRE | 20d? | 2024-01-08 | 2024-02-02 |  |  |
| 161 | 1.5.4 | **Validación implementación de CI/CD (MLOps)** | 25d? | 2024-01-08 | 2024-02-09 | 123 |  |
| 162 | 1.5.4.1 | Configuración de credenciales AWS PRE para conexión con repo github ML | 10d | 2024-01-08 | 2024-01-19 |  |  |
| 163 | 1.5.4.2 | Configuración de credenciales repo github ML para conexión AWS PRE | 10d | 2024-01-08 | 2024-01-19 |  |  |
| 164 | 1.5.4.3 | Verificación de conexión AWS DEV - Github | 5d? | 2024-01-22 | 2024-01-26 |  | start no earlier than 2024-01-22 |
| 165 | 1.5.4.4 | Pipeline Deployment: Implementación de scripts CI/CD (github actions) | 10d? | 2024-01-29 | 2024-02-09 |  | start no earlier than 2024-01-29 |
| 166 | 1.5.4.5 | Pipeline deployment: Automatizar despliegue del modelo | 10d | 2024-01-29 | 2024-02-09 |  | start no earlier than 2024-01-29 |
| 167 | 1.5.4.6 | Pipeline Monitoring: Implementación pipeline de pruebas y validación (veracode, sonarcube, herramientas ad hoc) | 10d | 2024-01-29 | 2024-02-09 |  | start no earlier than 2024-01-29 |
| 168 | 1.5.4.7 | Pipeline Monitoring: Implementación pipelines de seguimiento a métricas del modelo | 10d | 2024-01-29 | 2024-02-09 |  | start no earlier than 2024-01-29 |
| 169 | 1.6 | **Migración de modelo Nómina Adquisición PRE** | 15d | 2024-02-12 | 2024-03-01 | 133 |  |
| 170 | 1.6.1 | **Transformación variables bajo maestras** | 10d | 2024-02-12 | 2024-02-23 |  |  |
| 171 | 1.6.1.1 | **Sobre Snowflake PRE** | 10d | 2024-02-12 | 2024-02-23 |  |  |
| 172 | 1.6.1.1.1 | **Reconstrucción de variables** | 10d | 2024-02-12 | 2024-02-23 |  | start no earlier than 2024-02-12 |
| 173 | 1.6.1.1.1.1 | Reconstrucción variables 1-5 | 10d | 2024-02-12 | 2024-02-23 |  |  |
| 174 | 1.6.1.1.1.2 | Reconstrucción variables 6-10 | 10d | 2024-02-12 | 2024-02-23 |  |  |
| 175 | 1.6.1.1.1.3 | Reconstrucción variables 11-15 | 10d | 2024-02-12 | 2024-02-23 |  |  |
| 176 | 1.6.1.1.1.4 | Reconstrucción variables 16-20 | 10d | 2024-02-12 | 2024-02-23 |  |  |
| 177 | 1.6.1.1.1.5 | Reconstrucción variables 20-26 | 10d | 2024-02-12 | 2024-02-23 |  |  |
| 178 | 1.6.2 | **Uso de vars reconstruidas bajo maestras en modelo de nómina** | 5d | 2024-02-26 | 2024-03-01 | 171 |  |
| 179 | 1.6.2.1 | Validación de métricas del modelo bajo variables reconstruidas | 5d | 2024-02-26 | 2024-03-01 |  |  |
